# Cansat 2016 Project EKC Dover 12Dec

Schedule from MS Project, 2016-09-26 to 2017-03-02, A marks actual dates.
East Kent College

## Calendars

- Standard: Mon-Fri 08:00-12:00, 13:00-17:00; Sat-Sun off.

## Resources

| Resource | Group |
| --- | --- |
| Luke | Mechanical design |
| Connor | Mechanical design |
| Jai | Mentor Software |
| Garry | Mentor Mechanical |
| James | Tutor IT |
| Peter | Tutor Engineering |
| Matthew | Electronics |
| Robin | BaseStation GUI |
| Steven |  |
| Ruaraidh |  |
| Rory | Software |
| Old Boy | baseStation Sensors |
| year 3 GUI team | BaseStaion GUI and App Design |
| Kai | BaseStation GUI |
| Dylan | Outreach |
| CanSat Team | Public Speaking |
| Danial | Parachute |
| Iguars | Backup Cansat tminus |
| Hari | Outreach |

## Schedule

| ID | WBS | Task | Type | Duration | Start | Finish | Predecessors | Complete | Remaining | Total slack | Resources | Work | Actual work |
| --- | --- | --- | --- | --- | --- | --- | --- | --- | --- | --- | --- | --- | --- |
| 1 | 1 | **Complete Project Cansat EKC Spitfires 2016** |  | 114d? | 2016-09-26 A | 2017-03-02 |  | 26% | 84.77d? | 0d |  | 2072h | 1208h |
| 2 | 1.1 | **1.0 Mechanical design** |  | 77d | 2016-09-26 A | 2017-01-10 |  | 34% | 50.5d | 0d |  | 256h | 136h |
| 3 | 1.1.1 | 1.1 Brainstorming | manual | 1d | 2016-09-26 A | 2016-09-26 A |  | 100% |  |  | Luke; Peter | 16h | 16h |
| 4 | 1.1.2 | 1.2 Design Can on CAD | manual | 30d | 2016-09-27 A | 2016-11-07 | 3 | 50% | 15d |  | Luke | 240h | 120h |
| 5 | 1.1.3 | 1.3 Manufacture Protype 3D printing | manual | 21d | 2016-11-08 A | 2016-12-06 | 4 | 50% | 10.5d |  |  |  |  |
| 6 | 1.1.4 | 1.4 Test Protype | manual | 5d | 2016-12-07 | 2016-12-13 | 5 |  |  |  |  |  |  |
| 7 | 1.1.5 | 1.5 Impact control | manual | 20d | 2016-12-14 | 2017-01-10 | 6 |  |  |  |  |  |  |
| 8 | 1.2 | **2.0 Electronics hardware** |  | 68d? | 2016-09-26 A | 2016-12-28 |  | 1% | 67.5d? | 0d |  | 32h | 16h |
| 9 | 1.2.1 | 2.1 Brainstorming | manual | 1d | 2016-09-26 A | 2016-09-26 A |  | 100% |  |  | Matthew; Peter | 16h | 16h |
| 10 | 1.2.2 | 2.2 Protype primary mission | manual | 31d | 2016-09-27 | 2016-11-08 | 9 |  |  |  |  |  |  |
| 11 | 1.2.3 | 2.2.1 Calibrate primary mission | manual | 1d? | 2016-11-09 | 2016-11-09 | 10 |  |  |  |  |  |  |
| 12 | 1.2.4 | 2.3 Brainstorm secondry mission | manual | 1d | 2016-09-27 | 2016-09-27 |  |  |  |  |  |  |  |
| 13 | 1.2.5 | 2.3.1 Protype secondry mission | manual | 50d | 2016-09-28 | 2016-12-06 | 12 |  |  |  |  |  |  |
| 14 | 1.2.6 | 2.3.2 Calibrate secondry mission | manual | 1d? | 2016-12-07 | 2016-12-07 | 13 |  |  |  |  |  |  |
| 15 | 1.2.7 | 2.4 Test combined missions | manual | 1d? | 2016-12-08 | 2016-12-08 | 14, 11 |  |  |  |  |  |  |
| 16 | 1.2.8 | 2.5 Protype solar panels | manual | 1d | 2016-12-09 | 2016-12-09 | 15, 17 |  |  |  | Luke; Peter | 16h |  |
| 17 | 1.2.9 | 2.5.1 test sollar panels | manual | 1d? | 2016-09-26 | 2016-09-26 |  |  |  |  |  |  |  |
| 18 | 1.2.10 | 2.6 Protype Sheilding | manual | 1d? | 2016-09-26 | 2016-09-26 |  |  |  |  |  |  |  |
| 19 | 1.2.11 | 2.6.1 Test Sheilding | manual | 1d? | 2016-09-26 | 2016-09-26 |  |  |  |  |  |  |  |
| 20 | 1.2.12 | 2.7 Component compliance | manual | 1d? | 2016-09-26 | 2016-09-26 |  |  |  |  |  |  |  |
| 21 | 1.2.13 | 2.7.1 component Location | manual | 1d? | 2016-09-26 | 2016-09-26 |  |  |  |  |  |  |  |
| 22 | 1.2.14 | 2.7.2 component Vibration Profing | manual | 1d? | 2016-09-26 | 2016-09-26 |  |  |  |  |  |  |  |
| 23 | 1.2.15 | 2.8.1 PCB design | manual | 31d | 2016-11-01 | 2016-12-13 |  |  |  |  |  |  |  |
| 24 | 1.2.16 | 2.8.2 PCB board manufacture | manual | 1d | 2016-12-14 | 2016-12-14 | 23 |  |  |  |  |  |  |
| 25 | 1.2.17 | 2.8.3 PCB test | manual | 7d | 2016-12-15 | 2016-12-23 | 24 |  |  |  |  |  |  |
| 26 | 1.2.18 | 2.8.4 Final changes to PCB layout | manual | 1d | 2016-12-26 | 2016-12-26 | 25 |  |  |  |  |  |  |
| 27 | 1.2.19 | 2.8.5 Order PCBS | manual | 1d | 2016-12-27 | 2016-12-27 | 26 |  |  |  |  |  |  |
| 28 | 1.2.20 | 2.8.6 Populate and test sensor | manual | 1d | 2016-12-28 | 2016-12-28 | 27 |  |  |  |  |  |  |

| ID | WBS | Task | Type | Duration | Start | Finish | Predecessors | Complete | Remaining | Total slack | Resources | Work | Actual work |
| --- | --- | --- | --- | --- | --- | --- | --- | --- | --- | --- | --- | --- | --- |
| 29 | 1.3 | **3.0 Software programming** |  | 98d | 2016-10-18 A | 2017-03-02 |  | 41% | 58d | 0d |  | 1104h | 640h |
| 30 | 1.3.1 | 3.1 Cansat software ver 1 | manual | 40d | 2016-10-18 A | 2016-12-12 A |  | 100% |  |  | Jai; Rory | 640h | 640h |
| 31 | 1.3.2 | 3.2 Cansat software ver 2 | manual | 37d | 2016-12-13 | 2017-02-01 | 30 |  |  |  | Rory | 296h |  |
| 32 | 1.3.3 | 3.3 Cansat software Final | manual | 21d | 2017-02-02 | 2017-03-02 | 31 |  |  |  | Rory | 168h |  |
| 33 | 1.4 | **4.0 Parachute** |  | 94d | 2016-09-27 A | 2017-02-03 |  | 79% | 20.14d | 0d |  | 16h | 16h |
| 34 | 1.4.1 | 4.1 Brainstorming | manual | 1d | 2016-09-27 A | 2016-09-27 A |  | 100% |  |  | Garry; Danial | 16h | 16h |
| 35 | 1.4.2 | 4.2 Make Calculations for paracute | manual | 31d | 2016-09-28 A | 2016-11-09 A | 34 | 100% |  |  |  |  |  |
| 36 | 1.4.3 | 4.3 make protype parachute | manual | 23d | 2016-11-10 A | 2016-12-12 A | 35 | 100% |  |  |  |  |  |
| 37 | 1.4.4 | 4.4 Test parachute in wind tunnel | manual | 6d | 2017-01-16 | 2017-01-23 | 36 |  |  |  |  |  |  |
| 38 | 1.4.5 | 4.5 Drop Test parachute with dummy can | manual | 9d | 2017-01-24 | 2017-02-03 | 37 |  |  |  |  |  |  |
| 39 | 1.5 | **5.0 Radio communication** |  | 7d? | 2016-11-04 A | 2016-11-14 |  | 10% | 6.3d? | 0d |  |  |  |
| 40 | 1.5.1 | 5.1 Brainstorming | manual | 1d | 2016-11-04 A | 2016-11-04 A |  | 100% |  |  |  |  |  |
| 41 | 1.5.2 | 5.2 Protype radio comunications | manual | 6d | 2016-11-07 | 2016-11-14 | 40 |  |  |  |  |  |  |
| 42 | 1.5.3 | 5.2.1 test radio comunications short range | manual | 1d? | 2016-11-04 | 2016-11-04 |  |  |  |  |  |  |  |
| 43 | 1.5.4 | 5.3 Protype Long range arial | manual | 1d? | 2016-11-04 | 2016-11-04 |  |  |  |  |  |  |  |
| 44 | 1.5.5 | 5.3.1 test long range arial | manual | 1d? | 2016-11-04 | 2016-11-04 |  |  |  |  |  |  |  |
| 45 | 1.6 | **6.0 Advertisement and Sponsorship** |  | 1d? | 2016-09-27 A | 2016-09-27 |  | 25% | 0.75d? | 0d |  |  |  |
| 46 | 1.6.1 | 6.1 Brainstorming | manual | 1d | 2016-09-27 A | 2016-09-27 A |  | 100% |  |  |  |  |  |
| 47 | 1.6.2 | 6.2 Sponsers | manual | 1d? | 2016-09-27 | 2016-09-27 |  |  |  |  |  |  |  |
| 48 | 1.6.3 | 6.3 EKC ? | manual | 1d? | 2016-09-27 | 2016-09-27 |  |  |  |  |  |  |  |
| 49 | 1.6.4 | <New Task> | manual | 1d? | 2016-09-27 | 2016-09-27 |  |  |  |  |  |  |  |
| 50 | 1.7 | **7.0 Outreach** |  | 55d? | 2016-09-27 A | 2016-12-12 |  | 65% | 19.1d? | 0d |  | 576h | 400h |
| 51 | 1.7.1 | 7.1 Brainstorming | manual | 1d | 2016-09-27 A | 2016-09-27 A |  | 100% |  |  | Dylan; Garry | 16h | 16h |
| 52 | 1.7.2 | 7.2 Website | manual | 1d? | 2016-09-27 | 2016-09-27 |  |  |  |  |  |  |  |
| 53 | 1.7.3 | 7.2.1 Domain name | manual | 1d? | 2016-09-27 | 2016-09-27 |  |  |  |  |  |  |  |
| 54 | 1.7.4 | 7.3 Team speech | manual | 1d | 2016-09-27 | 2016-09-27 |  |  |  |  | CanSat Team | 8h |  |
| 55 | 1.7.5 | 7.4 Race to The Moon Idea | manual | 2d | 2016-09-28 A | 2016-09-29 A | 51 | 100% |  |  | Dylan; Garry | 32h | 32h |
| 56 | 1.7.6 | 7.4.1 Protype and test ballon rocket | manual | 11d | 2016-09-30 A | 2016-10-14 A | 55 | 100% |  |  | Dylan | 88h | 88h |
| 57 | 1.7.7 | 7.4.2 Protype school kids rocket race | manual | 26d | 2016-10-18 A | 2016-11-22 A | 56 | 100% |  |  | Dylan | 208h | 208h |
| 58 | 1.7.8 | 7.4.3 design outreach lesson plan for kids | manual | 14d | 2016-11-23 A | 2016-12-12 | 57 | 25% | 10.5d |  | Dylan | 112h | 28h |
| 59 | 1.7.9 | 7.4.4 design Power point presentation | manual | 14d | 2016-11-23 A | 2016-12-12 | 57 | 25% | 10.5d |  | CanSat Team | 112h | 28h |
| 60 | 1.7.10 | 7.5 Travel to school deliver oureach | manual | 1d? | 2016-09-27 | 2016-09-27 | 59 |  |  |  |  |  |  |

| ID | WBS | Task | Type | Duration | Start | Finish | Predecessors | Complete | Remaining | Total slack | Resources | Work |
| --- | --- | --- | --- | --- | --- | --- | --- | --- | --- | --- | --- | --- |
| 61 | 1.8 | **8.0 Progress reports** |  | 45d? | 2016-10-18 A | 2016-12-19 |  | 63% | 16.68d? | 0d |  |  |
| 62 | 1.8.1 | 8.1 Progress report 1 | manual | 1d | 2016-10-18 A | 2016-10-18 A |  | 100% |  |  |  |  |
| 63 | 1.8.2 | 8.2 Progress report 2 | manual | 26d | 2016-11-07 A | 2016-12-12 | 62 | 66% | 8.75d |  |  |  |
| 64 | 1.8.3 | 8.3 Progress report 3 | manual | 1d? | 2016-12-19 | 2016-12-19 | 63 |  |  |  |  |  |
| 65 | 1.8.4 | <New Task> | manual | 1d? | 2016-10-18 | 2016-10-18 |  |  |  |  |  |  |
| 66 | 1.9 | **9.0 Finanance** |  | 71d? | 2016-11-24 | 2017-03-02 |  |  |  | 0d |  |  |
| 67 | 1.9.1 | 9.1 Cansat parts | manual | 1d? | 2016-11-24 | 2016-11-24 |  |  |  |  |  |  |
| 68 | 1.9.2 | 9.2 Test equipment | manual | 1d? | 2016-11-24 | 2016-11-24 |  |  |  |  |  |  |
| 69 | 1.9.3 | 9.3 travel | manual | 71d | 2016-11-24 | 2017-03-02 |  |  |  |  |  |  |
| 70 | 1.9.4 | 9.4 Acodadation | manual | 71d | 2016-11-24 | 2017-03-02 |  |  |  |  |  |  |
| 71 | 1.10 | **10.0 Travel** |  | 4d? | 2016-11-24 | 2016-11-29 |  |  |  | 0d |  |  |
| 72 | 1.10.1 | 10.1 Define method | manual | 1d? | 2016-11-24 | 2016-11-24 |  |  |  |  |  |  |
| 73 | 1.10.2 | 10.2 Aquire funding | manual | 1d | 2016-11-25 | 2016-11-25 | 72 |  |  |  |  |  |
| 74 | 1.10.3 | 10.3 Book accododation | manual | 1d | 2016-11-28 | 2016-11-28 | 73 |  |  |  |  |  |
| 75 | 1.10.4 | 10.4 Book travel | manual | 1d | 2016-11-29 | 2016-11-29 | 74 |  |  |  |  |  |
| 76 | 1.11 | **11.0 Base Station** |  | 12d | 2016-11-25 | 2016-12-12 |  |  |  | 0d |  |  |
| 77 | 1.11.1 | 11.0 Brain storming | manual | 3d | 2016-11-25 | 2016-11-29 |  |  |  |  |  |  |
| 78 | 1.11.2 | 11.1 Base station sensors | manual | 9d | 2016-11-30 | 2016-12-12 | 77 |  |  |  |  |  |
| 79 | 1.11.3 | 11.2 Base station communication | manual | 9d | 2016-11-30 | 2016-12-12 | 77 |  |  |  |  |  |
| 80 | 1.11.4 | 11.3 Base station User Interface | manual | 9d | 2016-11-30 | 2016-12-12 | 77 |  |  |  |  |  |
| 81 | 1.11.5 | 11.4 Base station yargi ariel | manual | 9d | 2016-11-30 | 2016-12-12 | 77 |  |  |  |  |  |
| 82 | 1.12 | **12.0 Backup equipment** |  | 12d? | 2016-11-25 | 2016-12-12 |  |  |  | 0d |  | 88h |
| 83 | 1.12.1 | 12.1 backup brainstorming | manual | 1d? | 2016-11-25 | 2016-11-25 |  |  |  |  |  |  |
| 84 | 1.12.2 | 12.2 backup CanSat | manual | 11d | 2016-11-28 | 2016-12-12 | 83 |  |  |  | Iguars | 88h |
| 85 | 1.12.3 | 12.3 backup Basestation | manual | 11d | 2016-11-28 | 2016-12-12 | 83 |  |  |  |  |  |
| 86 | 1.12.4 | 12.4 backup Arial | manual | 11d | 2016-11-28 | 2016-12-12 | 83 |  |  |  |  |  |
| 87 | 1.12.5 | 12.5 backup parachute | manual | 11d | 2016-11-28 | 2016-12-12 | 83 |  |  |  |  |  |

| ID | WBS | Task | Type | Duration | Start | Finish | Total slack |
| --- | --- | --- | --- | --- | --- | --- | --- |
| 88 | 1.13 | **13 .0 Launch procedures** |  | 12d? | 2016-11-25 | 2016-12-12 | 0d |
| 89 | 1.13.1 | 13.1 launchday check sheet | manual | 12d | 2016-11-25 | 2016-12-12 |  |
